Schedule from MS Project, 2022-09-27 to 2022-11-30, status date 2022-11-22, costs in $, A marks actual dates.

## Calendars

- Standard: Mon-Fri 08:00-12:00, 13:00-17:00; Sat-Sun off.

## Resources

| Resource | Group | Rate | Cost per use |
| --- | --- | --- | --- |
| Khanh | DEV | 3 |  |
| Bao | DEV | 3 |  |
| Vi | DEV | 3 |  |
| Luong | DEV | 3 |  |
| Hung | DEV | 3 |  |
| FrontEnd Server | FE | 0.25 |  |
| Bakend Server | BE | 0.38 |  |
| Domain | DEPLOY | 20 | 10 |
| Database |  | 600 |  |
| Hardware | ITHW |  |  |
| Software | ITHW |  |  |

## Schedule

| ID | WBS | Task | Type | Duration | Start | Finish | Predecessors | Complete | Remaining | Actual finish | Baseline start | Baseline finish | Baseline duration | Total slack | Resources | Work | Actual work | Cost | Baseline cost | Actual cost |
| --- | --- | --- | --- | --- | --- | --- | --- | --- | --- | --- | --- | --- | --- | --- | --- | --- | --- | --- | --- | --- |
| 1 | 1 | **Library** |  | 46.25d | 2022-09-27 A | 2022-11-30 |  | 60% | 18.3d |  | 2022-09-27 | 2022-11-30 | 46.25d | 0d |  | 2074h | 1096.5h | 58,573 | 50,293 | 55,640.5 |
| 2 | 1.1 | **Design** |  | 13d | 2022-09-27 A | 2022-10-13 |  | 100% |  | 2022-10-12 | 2022-09-27 | 2022-10-13 | 13d |  |  | 616h | 616h | 30,504 | 22,272 | 30,504 |
| 3 | 1.1.1 | Thiết kế kiến trúc phần mềm | manual | 6d | 2022-09-27 A | 2022-10-04 A |  | 100% |  |  | 2022-09-27 | 2022-10-03 | 4.38d |  | Hung; Luong; Vi | 222h | 222h | 666 | 504 | 666 |
| 4 | 1.1.2 | Tìm hiểu xác định công nghệ | manual | 6d | 2022-10-05 A | 2022-10-12 A | 3 | 100% |  |  | 2022-10-06 | 2022-10-12 | 4.38d |  | Khanh | 74h | 74h | 222 | 168 | 222 |
| 5 | 1.1.3 | Thiết kế UI/UX | manual | 11d | 2022-09-27 A | 2022-10-11 A |  | 100% |  |  | 2022-09-29 | 2022-10-10 | 7.25d |  | Bao | 139h | 139h | 417 | 288 | 417 |
| 6 | 1.1.4 | Thiết kế DB | manual | 6d | 2022-10-04 A | 2022-10-11 A | 3 | 100% |  |  | 2022-10-06 | 2022-10-12 | 4.38d |  | Vi; Database | 122h | 122h | 29,022 | 21,168 | 29,022 |
| 7 | 1.1.5 | **API Documents** |  | 6d | 2022-10-06 A | 2022-10-13 |  | 100% |  | 2022-10-11 | 2022-10-06 | 2022-10-13 | 6d |  |  | 59h | 59h | 177 | 144 | 177 |
| 8 | 1.1.5.1 | API Doc phần 1 | manual | 2d | 2022-10-06 A | 2022-10-07 A |  | 100% |  |  | 2022-10-06 | 2022-10-07 | 2.38d |  | Hung | 21h | 21h | 63 | 72 | 63 |
| 9 | 1.1.5.2 | API Doc phần 2 | manual | 3d | 2022-10-07 A | 2022-10-11 A | 8 | 100% |  |  | 2022-10-11 | 2022-10-12 | 2.38d |  | Luong | 38h | 38h | 114 | 72 | 114 |
| 10 | 1.2 | **Setup Environment** |  | 6d | 2022-10-17 A | 2022-10-23 |  | 100% |  | 2022-10-21 | 2022-10-17 | 2022-10-23 | 6d |  |  | 177h | 177h | 24,226 | 24,226 | 24,226 |
| 11 | 1.2.1 | Xây dựng môi trường dev | manual | 5d | 2022-10-17 A | 2022-10-21 A | 4, 5, 6, 7, 9 | 100% |  |  | 2022-10-17 | 2022-10-21 | 5d |  | Khanh; Bakend Server; Database; Domain; FrontEnd Server; Hardware [0.1%]; Software [0.1%] | 177h | 177h | 24,226 | 24,226 | 24,226 |
| 12 | 1.3 | **Development** |  | 20.38d | 2022-10-17 A | 2022-11-14 |  | 67% | 6.79d |  | 2022-10-17 | 2022-11-14 | 20.38d | 0d |  | 481h | 299.3h | 1,443 | 1,395 | 897.9 |
| 13 | 1.3.1 | **Xây dựng giao diện** |  | 8d | 2022-10-17 A | 2022-10-26 A |  | 100% |  |  | 2022-10-17 | 2022-10-26 | 8d |  |  | 138h | 138h | 414 | 384 | 414 |
| 14 | 1.3.1.1 | Xây dựng giao diện Đăng nhập, đăng xuất, đăng ký chung cho toàn bộ actors | manual | 1.5d | 2022-10-17 A | 2022-10-18 A |  | 100% |  |  | 2022-10-17 | 2022-10-18 | 1.5d |  | Luong | 16h | 16h | 48 | 48 | 48 |
| 15 | 1.3.1.2 | Xây dựng giao diện phân chia role, permission theo account | manual | 1.5d | 2022-10-17 A | 2022-10-18 A |  | 100% |  |  | 2022-10-17 | 2022-10-18 | 1.5d |  | Vi | 16h | 16h | 48 | 48 | 48 |
| 16 | 1.3.1.3 | Xây dựng giao diện người dùng | manual | 1.5d | 2022-10-19 A | 2022-10-20 A | 14 | 100% |  |  | 2022-10-19 | 2022-10-20 | 1.5d |  | Luong | 16h | 16h | 48 | 48 | 48 |
| 17 | 1.3.1.4 | Xây dựng giao diện Quản lý sách | manual | 1.5d | 2022-10-19 A | 2022-10-20 A | 15 | 100% |  |  | 2022-10-19 | 2022-10-20 | 1.5d |  | Vi | 16h | 16h | 48 | 48 | 48 |
| 18 | 1.3.1.5 | Xây dựng giao diện gửi yêu cầu mua, mượn trả sách | manual | 1.5d | 2022-10-21 A | 2022-10-22 A | 16 | 100% |  |  | 2022-10-21 | 2022-10-22 | 1.5d |  | Luong | 16h | 16h | 48 | 48 | 48 |
| 19 | 1.3.1.6 | Xây dựng giao diện quản lý nhập sách | manual | 2d | 2022-10-21 A | 2022-10-23 A | 17 | 100% |  |  | 2022-10-21 | 2022-10-22 | 1.5d |  | Vi | 26h | 26h | 78 | 48 | 78 |
| 20 | 1.3.1.7 | Xây dựng giao diện tìm kiếm thông tin, tình trạng sách | manual | 1.5d | 2022-10-25 A | 2022-10-26 A | 18 | 100% |  |  | 2022-10-25 | 2022-10-26 | 1.5d |  | Luong | 16h | 16h | 48 | 48 | 48 |
| 21 | 1.3.1.8 | Xây dựng giao diện đọc sách trực tuyến | manual | 1.5d | 2022-10-25 A | 2022-10-26 A | 19 | 100% |  |  | 2022-10-25 | 2022-10-26 | 1.5d |  | Vi | 16h | 16h | 48 | 48 | 48 |
| 22 | 1.3.2 | **Xây dựng API** |  | 14d | 2022-10-17 A | 2022-11-03 | 11 | 61% | 5.41d |  | 2022-10-17 | 2022-11-03 | 14d |  |  | 287h | 161.3h | 861 | 843 | 483.9 |
| 23 | 1.3.2.1 | Xây dựng API đăng nhập, đăng xuất, đăng ký chung cho toàn bộ actors | manual | 5d | 2022-10-17 A | 2022-10-21 A |  | 100% |  |  | 2022-10-17 | 2022-10-21 | 4.88d |  | Hung | 57h | 57h | 171 | 168 | 171 |
| 24 | 1.3.2.2 | Xây dựng API phân chia role, permission theo account | manual | 1.5d | 2022-10-24 A | 2022-10-25 A |  | 100% |  |  | 2022-10-24 | 2022-10-25 | 1.5d |  | Bao | 16h | 16h | 48 | 48 | 48 |
| 25 | 1.3.2.3 | Xây dựng API quản lý người dùng | manual | 3d | 2022-10-26 A | 2022-10-28 | 23 | 50% | 1.5d |  | 2022-10-26 | 2022-10-28 | 3d |  | Khanh | 33h | 16h | 99 | 99 | 48 |
| 26 | 1.3.2.4 | Xây dựng API quản lý sách | manual | 3.75d | 2022-10-26 A | 2022-10-31 | 24 | 60% | 1.5d |  | 2022-10-26 | 2022-10-31 | 3.75d |  | Bao | 48h | 26h | 144 | 144 | 78 |
| 27 | 1.3.2.5 | Xây dựng API gửi yêu cầu mua, mượn trả sách | manual | 3.25d | 2022-10-28 A | 2022-11-01 |  | 5% | 3.09d |  | 2022-10-28 | 2022-11-01 | 3.25d |  | Hung | 40h | 1.3h | 120 | 120 | 3.9 |
| 28 | 1.3.2.6 | Xây dựng API quản lý nhập sách | manual | 4d | 2022-10-17 A | 2022-10-20 A | 5, 6 | 100% |  |  | 2022-10-17 | 2022-10-20 | 3.5d |  | Bao | 45h | 45h | 135 | 120 | 135 |
| 29 | 1.3.2.7 | Xây dựng API tìm kiếm thông tin, tình trạng sách | manual | 1.5d | 2022-11-02 | 2022-11-03 |  |  |  |  | 2022-11-02 | 2022-11-03 | 1.5d |  | Hung; Khanh | 32h |  | 96 | 96 |  |
| 30 | 1.3.2.8 | Xây dựng API đọc sách trực tuyến | manual | 1.5d | 2022-11-02 | 2022-11-03 |  |  |  |  | 2022-11-02 | 2022-11-03 | 1.5d |  | Bao | 16h |  | 48 | 48 |  |
| 31 | 1.3.3 | Áp dụng API vào giao diện | manual | 4.38d | 2022-11-08 | 2022-11-14 | 36, 13 |  |  |  | 2022-11-08 | 2022-11-14 | 4.38d |  | Vi | 56h |  | 168 | 168 |  |

| ID | WBS | Task | Type | Duration | Start | Finish | Predecessors | Complete | Remaining | Baseline start | Baseline finish | Baseline duration | Total slack | Resources | Work | Actual work | Cost | Baseline cost | Actual cost |
| --- | --- | --- | --- | --- | --- | --- | --- | --- | --- | --- | --- | --- | --- | --- | --- | --- | --- | --- | --- |
| 32 | 1.4 | **Testing** |  | 24.25d | 2022-10-27 A | 2022-11-30 |  | 1% | 24.04d | 2022-10-27 | 2022-11-30 | 24.25d | 0d |  | 800h | 4.2h | 2,400 | 2,400 | 12.6 |
| 33 | 1.4.1 | Component Testing | manual | 5.25d | 2022-10-27 A | 2022-11-02 | 13 | 5% | 4.99d | 2022-10-27 | 2022-11-02 | 5.25d |  | Luong; Vi | 128h | 4.2h | 384 | 384 | 12.6 |
| 34 | 1.4.2 | System Test | manual | 14.12d | 2022-11-08 | 2022-11-25 |  |  |  | 2022-11-08 | 2022-11-25 | 14.12d |  | Khanh | 176h |  | 528 | 528 |  |
| 35 | 1.4.3 | Unit Testing | manual | 9.25d | 2022-11-17 | 2022-11-30 | 31 |  |  | 2022-11-17 | 2022-11-30 | 9.25d |  | Bao; Hung; Luong; Vi | 480h |  | 1,440 | 1,440 |  |
| 36 | 1.4.4 | Intergration Testing | manual | 1.5d | 2022-11-04 | 2022-11-05 | 22 |  |  | 2022-11-04 | 2022-11-05 | 1.5d |  | Vi | 16h |  | 48 | 48 |  |
